Schedule from GanttProject, 2015-06-01 to 2015-11-06.

## Calendars

- Project calendar: Mon-Fri working; Sat-Sun off.

## Resources

| Resource | Group |
| --- | --- |
| Greg Chalmers |  |
| Andre Lobato |  |
| Greg Pearson |  |
| Andrew Parsonov | System Admin |
| Raf Guedes | Modeller |
| Alex Port | Modeller |
| Raf Soutelino | Modeller |
| Rosa Trancoso | Modeller |
| Thomas Coats |  |
| Tim Gunn |  |
| Tom Durrant | Modeller |
| Steven Fister |  |
| Richard Law |  |

## Schedule

| ID | WBS | Task | Duration | Start | Finish | Predecessors | Resources |
| --- | --- | --- | --- | --- | --- | --- | --- |
| 1 | 1 | **WXServer** | 60d | 2015-06-01 | 2015-08-21 |  |  |
| 2 | 1.1 | Renderer | 3d | 2015-07-01 | 2015-07-03 |  | Andre Lobato |
| 3 | 1.2 | Renderer P2 | 5d | 2015-07-27 | 2015-07-31 | 8 | Andre Lobato |
| 4 | 1.3 | Framework | 60d | 2015-06-01 | 2015-08-21 |  | Greg Chalmers |
| 5 | 1.4 | **Unisys Project** | 60d | 2015-06-01 | 2015-08-21 |  |  |
| 6 | 1.4.1 | File Processing | 60d | 2015-06-01 | 2015-08-21 |  | Greg Pearson |
| 7 | 2 | **scheduler** | 82d | 2015-07-16 | 2015-11-06 |  |  |
| 8 | 2.1 | Model | 7d | 2015-07-16 | 2015-07-24 |  | Andre Lobato |
| 9 | 2.2 | Model P2 | 30d | 2015-08-03 | 2015-09-11 | 3 | Andre Lobato |
| 10 | 2.3 | WRF Model Wrapper | 4d | 2015-07-21 | 2015-07-24 |  | Greg Pearson |
| 11 | 2.4 | WW4 Model Wrapper | 4d | 2015-07-22 | 2015-07-27 | 21 | Tom Durrant |
| 12 | 2.5 | SWAN Model Wrapper | 10d | 2015-07-20 | 2015-07-31 |  | Raf Guedes; Alex Port [20%] |
| 13 | 2.6 | ROMS Model Wrapper | 10d | 2015-07-20 | 2015-07-31 |  | Raf Soutelino |
| 14 | 2.7 | POM Model Wrapper | 10d | 2015-08-03 | 2015-08-14 | 13 | Raf Soutelino |
| 15 | 2.8 | Downloads | 20d | 2015-09-14 | 2015-10-09 | 9 |  |
| 16 | 2.9 | Products | 20d | 2015-10-12 | 2015-11-06 | 15 |  |
| 17 | 2.10 | Cloud Resource config | 10d | 2015-09-14 | 2015-09-25 | 9 | Andre Lobato [20%]; Andrew Parsonov [50%]; Steven Fister [50%] |
| 18 | 2.11 | Disaster Recovery | 30d | 2015-09-28 | 2015-11-06 | 17 | Andre Lobato [20%]; Andrew Parsonov [20%]; Steven Fister [50%] |
| 19 | 3 | UDS - Distributed | 30d | 2015-08-24 | 2015-10-02 | 4 | Greg Chalmers |
| 20 | 4 | verify | 1d | 2015-06-24 | 2015-06-24 |  |  |
| 21 | 5 | WW4 into production | 20d | 2015-06-24 | 2015-07-21 |  | Tom Durrant |
| 22 | 6 | ST6 Physics into ww4 | 25d | 2015-07-28 | 2015-08-31 | 11 | Tom Durrant |
| 23 | 7 | MOS Scheme | 30d | 2015-08-24 | 2015-10-02 | 6 | Greg Pearson |
| 24 | 8 | WEB Dev | 1d | 2015-06-24 | 2015-06-24 |  |  |
| 25 | 9 | Lightning Strike Database | 60d | 2015-06-22 | 2015-09-11 |  | Andre Lobato [10%]; Richard Law [50%] |
| 26 | 10 | gisPlugin | 20d | 2015-06-01 | 2015-06-26 |  | Richard Law [20%] |

| ID | WBS | Task | Duration | Start | Finish | Predecessors | Resources |
| --- | --- | --- | --- | --- | --- | --- | --- |
| 27 | 11 | **Accuweather** | 100d | 2015-06-01 | 2015-10-16 |  |  |
| 28 | 11.1 | Meetings | 100d | 2015-06-01 | 2015-10-16 |  | Richard Law [2%] |
| 29 | 12 | **Weather Telematics** | 100d | 2015-06-01 | 2015-10-16 |  |  |
| 30 | 12.1 | Meetings | 100d | 2015-06-01 | 2015-10-16 |  | Richard Law [2%] |
| 31 | 13 | **Satellite data Feed** | 40d | 2015-07-06 | 2015-08-28 |  |  |
| 32 | 13.1 | Migrate Existing Satellite Feed | 10d | 2015-07-06 | 2015-07-17 |  | Rosa Trancoso [50%] |
| 33 | 13.2 | Himuana 8 | 30d | 2015-07-20 | 2015-08-28 | 32 | Rosa Trancoso [50%] |
